# DDL_ProjectSchedule_v1.0_EN

Schedule from MS Project, 2015-09-07 to 2015-12-25.

## Calendars

- Standard: Mon-Fri 08:00-12:00, 13:00-17:00; Sat-Sun off.

## Resources

| Resource |
| --- |
| TEAM |
| ManhLN |
| HuyNM |
| ChinhVC |
| TrungVN |
| DevTeam |
| DesignTeam |
| MaiCTP |
| AnhDD |
| TestTEAM |

## Schedule

| ID | WBS | Task | Type | Duration | Start | Finish | Predecessors | Total slack | Free slack | Constraint | Resources | Work |
| --- | --- | --- | --- | --- | --- | --- | --- | --- | --- | --- | --- | --- |
| 1 | 1 | **Dandelion (DDL)** |  | 80d? | 2015-09-07 | 2015-12-25 |  | 0d |  |  |  | 1940h |
| 2 | 1.1 | **Initiation** |  | 12d? | 2015-09-07 | 2015-09-22 |  | 0d |  |  |  | 392h |
| 3 | 1.1.1 | Form up team roles |  | 0.5d | 2015-09-07 | 2015-09-07 |  | 0d |  |  | TEAM | 4h |
| 4 | 1.1.2 | Select project idea |  | 0.5d | 2015-09-07 | 2015-09-07 | 3 | 0d |  |  | TEAM | 4h |
| 5 | 1.1.3 | **Develop project idea** |  | 1d | 2015-09-08 | 2015-09-08 | 4 | 0d |  |  |  | 8h |
| 6 | 1.1.3.1 | Define project scope |  | 0.5d | 2015-09-08 | 2015-09-08 |  | 0d |  |  | TEAM | 4h |
| 7 | 1.1.3.2 | Define project features |  | 0.5d | 2015-09-08 | 2015-09-08 | 6 | 0d |  |  | TEAM | 4h |
| 8 | 1.1.4 | Kick-off meeting |  | 1d? | 2015-09-09 | 2015-09-09 | 5 | 0d |  |  | TEAM | 8h |
| 9 | 1.1.5 | **Environment** |  | 2d? | 2015-09-10 | 2015-09-11 | 8 | 0d |  |  |  | 16h |
| 10 | 1.1.5.1 | Create guideline to install and use tools & environments |  | 0.5d? | 2015-09-10 | 2015-09-10 |  | 0d |  |  | ChinhVC | 4h |
| 11 | 1.1.5.2 | **Install tools & environments** |  | 1d | 2015-09-10 | 2015-09-11 | 10 | 0d |  |  |  | 8h |
| 12 | 1.1.5.2.1 | Install TortoiseGit |  | 0.5h | 2015-09-10 | 2015-09-10 |  | 0d |  |  | TEAM | 0.5h |
| 13 | 1.1.5.2.2 | Install Visual Studio 2013 |  | 3h | 2015-09-10 | 2015-09-10 | 12 | 0d |  |  | TEAM | 3h |
| 14 | 1.1.5.2.3 | Install Microsoft SQL Server 2010 |  | 2h | 2015-09-10 | 2015-09-11 | 13 | 0d |  |  | TEAM | 2h |
| 15 | 1.1.5.2.4 | Install Microsoft Project 2013 |  | 2h | 2015-09-11 | 2015-09-11 | 14 | 0d |  |  | TEAM | 2h |
| 16 | 1.1.5.2.5 | Install Sublime Text |  | 0.5h | 2015-09-11 | 2015-09-11 | 15 | 0d |  |  | TEAM | 0.5h |
| 17 | 1.1.5.3 | Trainning using tools & environments |  | 0.5d | 2015-09-11 | 2015-09-11 | 11 | 0d |  |  | TEAM | 4h |
| 18 | 1.1.6 | **Technology Research (Part 1)** |  | 7d | 2015-09-14 | 2015-09-22 | 9 | 0d |  |  |  | 152h |
| 19 | 1.1.6.1 | Study .net MVC 5 |  | 7d | 2015-09-14 | 2015-09-22 |  | 0d |  | start no earlier than 2015-09-14 | DevTeam | 56h |
| 20 | 1.1.6.2 | Study AngularJS |  | 7d | 2015-09-14 | 2015-09-22 |  | 0d |  |  | DevTeam | 56h |
| 21 | 1.1.6.3 | Study Bootstraps, HTML5 & CSS3 |  | 5d | 2015-09-14 | 2015-09-18 |  | 2d |  |  | DesignTeam | 40h |
| 22 | 1.1.7 | SRS/PP Review checklist |  | 0.5d? | 2015-09-10 | 2015-09-10 | 8 | 0d |  |  | ChinhVC | 4h |
| 23 | 1.1.8 | **Project Introduction** |  | 3d | 2015-09-10 | 2015-09-15 | 22 | 2d | 0d |  |  | 28h |
| 24 | 1.1.8.1 | Create Project Introduction |  | 2d | 2015-09-10 | 2015-09-14 |  | 2d | 0d |  | HuyNM | 16h |
| 25 | 1.1.8.2 | Review Project Introduction |  | 0.5d | 2015-09-14 | 2015-09-14 | 24 | 2d | 0d |  | TrungVN; MaiCTP | 8h |
| 26 | 1.1.8.3 | Update Project Introduction |  | 0.5d | 2015-09-15 | 2015-09-15 | 25 | 2d | 0d |  | HuyNM | 4h |
| 27 | 1.1.8.4 | Complete Project Introduction | milestone | 0d | 2015-09-15 | 2015-09-15 | 26 | 2d |  |  |  |  |

| ID | WBS | Task | Type | Duration | Start | Finish | Predecessors | Total slack | Free slack | Resources | Work |
| --- | --- | --- | --- | --- | --- | --- | --- | --- | --- | --- | --- |
| 28 | 1.1.9 | **Project Plan** |  | 8d? | 2015-09-10 | 2015-09-22 | 22 | 0d |  |  | 96h |
| 29 | 1.1.9.1 | Create Project Plan in MS Word |  | 3d | 2015-09-10 | 2015-09-15 |  | 0d |  | ManhLN | 24h |
| 30 | 1.1.9.2 | Create Project Schedule in .mmp file |  | 3d | 2015-09-15 | 2015-09-18 | 29 | 0d |  | ManhLN | 24h |
| 31 | 1.1.9.3 | Create CM Plan |  | 2d | 2015-09-10 | 2015-09-14 |  | 4d |  | MaiCTP | 16h |
| 32 | 1.1.9.4 | Review Project Plan, CMPlan, Schedule |  | 1d | 2015-09-18 | 2015-09-21 | 31, 30 | 0d |  | ManhLN; MaiCTP | 16h |
| 33 | 1.1.9.5 | Update Project Plan, CMPlan, Schedule |  | 1d? | 2015-09-21 | 2015-09-22 | 32 | 0d |  | MaiCTP; ManhLN | 16h |
| 34 | 1.1.9.6 | Complete Project Plan | milestone | 0d | 2015-09-21 | 2015-09-21 | 32 | 1d |  |  |  |
| 35 | 1.1.10 | **User Requirement Specification** |  | 3d? | 2015-09-15 | 2015-09-18 | 23 | 2d |  |  | 40h |
| 36 | 1.1.10.1 | Create User Requirement Sepecification |  | 2d | 2015-09-15 | 2015-09-17 |  | 2d | 0d | ChinhVC; AnhDD | 32h |
| 37 | 1.1.10.2 | Review User Requirement Specification |  | 0.5d? | 2015-09-17 | 2015-09-17 | 36 | 2d | 0d | HuyNM | 4h |
| 38 | 1.1.10.3 | Update User Requirement Specification |  | 0.5d? | 2015-09-18 | 2015-09-18 | 37 | 2d | 0d | ChinhVC | 4h |
| 39 | 1.1.10.4 | Complete User Requirement Specification | milestone | 0d | 2015-09-18 | 2015-09-18 | 38 | 2d |  |  |  |
| 40 | 1.1.11 | **Q&A Sheet** |  | 3.5d? | 2015-09-10 | 2015-09-15 | 22 | 4.5d |  |  | 28h |
| 41 | 1.1.11.1 | Create Q&A sheet |  | 2d | 2015-09-10 | 2015-09-14 |  | 4.5d | 0d | TrungVN | 16h |
| 42 | 1.1.11.2 | Review Q&A sheet |  | 0.5d? | 2015-09-14 | 2015-09-14 | 41 | 4.5d | 0d | HuyNM | 4h |
| 43 | 1.1.11.3 | Translate Q&A sheet to Japanese |  | 1d | 2015-09-15 | 2015-09-15 | 42 | 4.5d |  | MaiCTP | 8h |
| 44 | 1.1.12 | Create progress report 1 |  | 0.5d | 2015-09-22 | 2015-09-22 | 23, 28, 35, 40 | 0d |  | MaiCTP | 4h |
| 45 | 1.1.13 | Submit progress report 1 | milestone | 0d | 2015-09-22 | 2015-09-22 | 44 | 0d |  | ManhLN |  |
| 46 | 1.2 | **Solution** |  | 26d? | 2015-09-23 | 2015-10-28 | 2 | 0d |  |  | 596h |
| 47 | 1.2.1 | **Technology Research (Part 2)** |  | 3d? | 2015-09-23 | 2015-09-25 |  | 0d |  |  | 56h |
| 48 | 1.2.1.1 | Code first migration |  | 2d | 2015-09-23 | 2015-09-24 |  | 2d | 1d | ManhLN | 16h |
| 49 | 1.2.1.2 | Restful API on .net MVC |  | 3d | 2015-09-23 | 2015-09-25 |  | 0d |  | HuyNM | 24h |
| 50 | 1.2.1.3 | Payment by BaoKim API |  | 1d? | 2015-09-23 | 2015-09-23 |  | 0d |  | TrungVN | 8h |
| 51 | 1.2.1.4 | Facebook Login API |  | 1d? | 2015-09-24 | 2015-09-24 | 50 | 0d |  | TrungVN | 8h |

| ID | WBS | Task | Type | Duration | Start | Finish | Predecessors | Total slack | Free slack | Resources | Work |
| --- | --- | --- | --- | --- | --- | --- | --- | --- | --- | --- | --- |
| 52 | 1.2.2 | **Demo & Prototypes** |  | 9d | 2015-09-23 | 2015-10-05 |  | 17d |  |  | 128h |
| 53 | 1.2.2.1 | Create Demo |  | 7d | 2015-09-23 | 2015-10-01 |  | 19d |  | DevTeam | 56h |
| 54 | 1.2.2.2 | Create Prototype |  | 9d | 2015-09-23 | 2015-10-05 |  | 17d |  | DesignTeam | 72h |
| 55 | 1.2.3 | **Software Requirement Specification** |  | 4d | 2015-09-23 | 2015-09-28 |  | 8d | 0d |  | 64h |
| 56 | 1.2.3.1 | **Non-functional Requirements Specification** |  | 2d | 2015-09-23 | 2015-09-24 |  | 8d | 0d |  | 32h |
| 57 | 1.2.3.1.1 | Define Security Requirements |  | 1d | 2015-09-23 | 2015-09-23 |  | 9d |  | MaiCTP | 8h |
| 58 | 1.2.3.1.2 | Define Performane Requirements |  | 1d | 2015-09-23 | 2015-09-23 |  | 9d |  | AnhDD | 8h |
| 59 | 1.2.3.1.3 | Define User-interface Requirements |  | 2d | 2015-09-23 | 2015-09-24 |  | 8d |  | ChinhVC | 16h |
| 60 | 1.2.3.2 | **Functional Requirements Specification** |  | 2d | 2015-09-25 | 2015-09-28 | 56 | 8d |  |  | 32h |
| 61 | 1.2.3.2.1 | Define User Client Module functional Requirements |  | 2d | 2015-09-25 | 2015-09-28 |  | 8d |  | ChinhVC | 16h |
| 62 | 1.2.3.2.2 | Define Admin Module functional Requirments |  | 2d | 2015-09-25 | 2015-09-28 |  | 8d |  | AnhDD | 16h |
| 63 | 1.2.4 | **System Design** |  | 16d? | 2015-09-25 | 2015-10-16 |  | 0d |  |  | 284h |
| 64 | 1.2.4.1 | Create design review checklist |  | 1d? | 2015-09-25 | 2015-09-25 | 51 | 0d |  | TrungVN | 8h |
| 65 | 1.2.4.2 | **Architectural Design** |  | 9d? | 2015-09-28 | 2015-10-08 | 64 | 0d |  |  | 80h |
| 66 | 1.2.4.2.1 | Define architectural design |  | 1d | 2015-09-28 | 2015-09-28 | 48 | 1d |  | ManhLN | 8h |
| 67 | 1.2.4.2.2 | Define system features |  | 2d | 2015-09-28 | 2015-09-29 | 49 | 0d |  | HuyNM | 16h |
| 68 | 1.2.4.2.3 | Study and choose suitable architectural design |  | 2d | 2015-09-30 | 2015-10-01 | 67, 66 | 0d |  | DevTeam | 16h |
| 69 | 1.2.4.2.4 | Create Architectural design |  | 3d | 2015-10-02 | 2015-10-06 | 68 | 0d |  | ManhLN | 24h |
| 70 | 1.2.4.2.5 | Review architectural design |  | 1d | 2015-10-07 | 2015-10-07 | 69 | 0d |  | TEAM | 8h |
| 71 | 1.2.4.2.6 | Update Architectural Design |  | 1d? | 2015-10-08 | 2015-10-08 | 70 | 0d |  | ManhLN | 8h |
| 72 | 1.2.4.2.7 | Complete Architectural Design version 1.0 | milestone | 0d | 2015-10-07 | 2015-10-07 | 70 | 1d |  |  |  |
| 73 | 1.2.4.3 | **Screen design** |  | 9d? | 2015-09-29 | 2015-10-09 | 55 | 13d |  |  | 112h |
| 74 | 1.2.4.3.1 | Create screen flow document |  | 2d | 2015-09-29 | 2015-09-30 |  | 13d | 0d | DesignTeam | 16h |
| 75 | 1.2.4.3.2 | Create client screen design |  | 5d | 2015-10-01 | 2015-10-07 | 74 | 13d | 0d | AnhDD | 40h |
| 76 | 1.2.4.3.3 | Create admin screen design |  | 5d | 2015-10-01 | 2015-10-07 | 74 | 13d | 0d | MaiCTP | 40h |
| 77 | 1.2.4.3.4 | Review screen design |  | 1d? | 2015-10-08 | 2015-10-08 | 76, 75 | 13d | 0d | ChinhVC | 8h |
| 78 | 1.2.4.3.5 | Update screen design |  | 1d? | 2015-10-09 | 2015-10-09 | 77 | 13d | 0d | DesignTeam | 8h |
| 79 | 1.2.4.3.6 | Complete screen design | milestone | 0d | 2015-10-09 | 2015-10-09 | 78 | 13d |  |  |  |

| ID | WBS | Task | Type | Duration | Start | Finish | Predecessors | Total slack | Free slack | Resources | Work |
| --- | --- | --- | --- | --- | --- | --- | --- | --- | --- | --- | --- |
| 80 | 1.2.4.4 | **Database design** |  | 4.5d? | 2015-09-29 | 2015-10-05 | 55 | 17.5d |  |  | 36h |
| 81 | 1.2.4.4.1 | Create database design |  | 3d | 2015-09-29 | 2015-10-01 |  | 17.5d | 0d | TrungVN | 24h |
| 82 | 1.2.4.4.2 | Review database design |  | 0.5d? | 2015-10-02 | 2015-10-02 | 81 | 17.5d | 0d | TEAM | 4h |
| 83 | 1.2.4.4.3 | Update database design |  | 1d | 2015-10-02 | 2015-10-05 | 82 | 17.5d | 0d | TrungVN | 8h |
| 84 | 1.2.4.4.4 | Complete database design | milestone | 0d | 2015-10-05 | 2015-10-05 | 83 | 17.5d |  |  |  |
| 85 | 1.2.4.5 | **Class/Component Design** |  | 6d? | 2015-10-09 | 2015-10-16 | 65, 55 | 0d |  |  | 48h |
| 86 | 1.2.4.5.1 | Define Class and Component |  | 1d | 2015-10-09 | 2015-10-09 |  | 0d |  | HuyNM | 8h |
| 87 | 1.2.4.5.2 | Create Class/component design |  | 3d | 2015-10-12 | 2015-10-14 | 86 | 0d |  | DevTeam | 24h |
| 88 | 1.2.4.5.3 | Review Class/component design |  | 1d? | 2015-10-15 | 2015-10-15 | 87 | 0d |  | ManhLN | 8h |
| 89 | 1.2.4.5.4 | Update Class/component design |  | 1d? | 2015-10-16 | 2015-10-16 | 88 | 0d |  | DevTeam | 8h |
| 90 | 1.2.4.5.5 | Complete Class/component design | milestone | 0d | 2015-10-16 | 2015-10-16 | 89 | 0d |  |  |  |
| 91 | 1.2.5 | Create progress report 2 |  | 1d | 2015-10-19 | 2015-10-19 | 85 | 0d |  | MaiCTP | 8h |
| 92 | 1.2.6 | Submit progress report 2 | milestone | 0d | 2015-10-19 | 2015-10-19 | 91 | 0d |  | ManhLN |  |
| 93 | 1.2.7 | **Testing** |  | 6d? | 2015-10-20 | 2015-10-27 | 92 | 0d |  |  | 48h |
| 94 | 1.2.7.1 | Create test plan/case checklists |  | 1d | 2015-10-20 | 2015-10-20 |  | 0d |  | MaiCTP | 8h |
| 95 | 1.2.7.2 | Create test plan |  | 3d | 2015-10-21 | 2015-10-23 | 94 | 0d |  | TestTEAM | 24h |
| 96 | 1.2.7.3 | Review test plan |  | 1d | 2015-10-26 | 2015-10-26 | 95 | 0d |  | MaiCTP | 8h |
| 97 | 1.2.7.4 | Update test plan |  | 1d? | 2015-10-27 | 2015-10-27 | 96 | 0d |  | TestTEAM | 8h |
| 98 | 1.2.7.5 | Test plan complete | milestone | 0d | 2015-10-27 | 2015-10-27 | 97 | 0d |  |  |  |
| 99 | 1.2.8 | Create progress report 3 |  | 1d? | 2015-10-28 | 2015-10-28 | 93 | 0d |  | MaiCTP | 8h |
| 100 | 1.2.9 | Submit progress report 3 | milestone | 0d | 2015-10-28 | 2015-10-28 | 99 | 0d |  | ManhLN |  |
| 101 | 1.3 | **Construction** |  | 31d? | 2015-10-29 | 2015-12-10 | 46 | 0d |  |  | 768h |
| 102 | 1.3.1 | **Define Coding Standards** |  | 1d? | 2015-10-29 | 2015-10-29 |  | 0d |  |  | 16h |
| 103 | 1.3.1.1 | Create Coding Convention |  | 1d? | 2015-10-29 | 2015-10-29 |  | 8d | 0d | ManhLN | 8h |
| 104 | 1.3.1.2 | Create Code & UT Test review checklist |  | 1d? | 2015-10-29 | 2015-10-29 |  | 0d |  | MaiCTP | 8h |

| ID | WBS | Task | Type | Duration | Start | Finish | Predecessors | Total slack | Free slack | Resources | Work |
| --- | --- | --- | --- | --- | --- | --- | --- | --- | --- | --- | --- |
| 105 | 1.3.2 | **Screen Design** |  | 2d | 2015-10-29 | 2015-10-30 |  | 10d | 2d |  | 16h |
| 106 | 1.3.2.1 | Refine screen design document and prototype |  | 2d | 2015-10-29 | 2015-10-30 |  | 10d |  | TEAM | 16h |
| 107 | 1.3.3 | **Coding & Unit test** |  | 18d | 2015-10-30 | 2015-11-24 |  | 8d | 0d |  | 360h |
| 108 | 1.3.3.1 | Structure core modules & source code common |  | 3d | 2015-10-30 | 2015-11-03 | 103 | 8d | 0d | DevTeam | 24h |
| 109 | 1.3.3.2 | **Client User Module** |  | 10d | 2015-11-04 | 2015-11-17 | 108, 105, 102 | 8d | 5d |  | 176h |
| 110 | 1.3.3.2.1 | Home Page Module |  | 3d | 2015-11-04 | 2015-11-06 |  | 10d | 0d | ManhLN | 24h |
| 111 | 1.3.3.2.2 | Login/ Logout Module |  | 2d | 2015-11-09 | 2015-11-10 | 110 | 10d | 0d | ManhLN | 16h |
| 112 | 1.3.3.2.3 | **Project module** |  | 8d | 2015-11-04 | 2015-11-13 |  | 8d | 0d |  | 64h |
| 113 | 1.3.3.2.3.1 | Create/manage a project Module |  | 5d | 2015-11-04 | 2015-11-10 |  | 8d | 0d | HuyNM | 40h |
| 114 | 1.3.3.2.3.2 | View/Back a project Module |  | 3d | 2015-11-11 | 2015-11-13 | 113 | 8d |  | HuyNM | 24h |
| 115 | 1.3.3.2.4 | User Personal Page Module |  | 3d | 2015-11-04 | 2015-11-06 |  | 9d | 0d | TrungVN | 24h |
| 116 | 1.3.3.2.5 | Search Module |  | 2d | 2015-11-16 | 2015-11-17 | 112 | 8d | 0d | HuyNM | 16h |
| 117 | 1.3.3.2.6 | Message Module |  | 4d | 2015-11-09 | 2015-11-12 | 115 | 9d | 0d | TrungVN | 32h |
| 118 | 1.3.3.3 | **Admin Module** |  | 10d | 2015-11-11 | 2015-11-24 | 108, 105, 102 | 8d | 0d |  | 160h |
| 119 | 1.3.3.3.1 | Login/ Logout module |  | 2d | 2015-11-11 | 2015-11-12 | 111 | 10d | 0d | ManhLN | 16h |
| 120 | 1.3.3.3.2 | Manage Users Module |  | 4d | 2015-11-13 | 2015-11-18 | 117 | 9d | 0d | TrungVN | 32h |
| 121 | 1.3.3.3.3 | Manage Projects Module |  | 5d | 2015-11-18 | 2015-11-24 | 116 | 8d |  | HuyNM | 40h |
| 122 | 1.3.3.3.4 | Manage Backings Module |  | 3d | 2015-11-13 | 2015-11-17 | 119 | 10d | 0d | ManhLN | 24h |
| 123 | 1.3.3.3.5 | Manage Categories Module |  | 3d | 2015-11-18 | 2015-11-20 | 122 | 10d |  | ManhLN | 24h |
| 124 | 1.3.3.3.6 | Mangage Silder Module |  | 3d | 2015-11-19 | 2015-11-23 | 120 | 9d |  | TrungVN | 24h |
| 125 | 1.3.3.4 | Complete Coding | milestone | 0d | 2015-11-24 | 2015-11-24 | 109, 118 | 8d |  |  |  |
| 126 | 1.3.4 | Create Progress Report 4 |  | 1d? | 2015-11-25 | 2015-11-25 | 105, 107 | 11d | 0d | ManhLN | 8h |
| 127 | 1.3.5 | Submit Progress Report 4 | milestone | 0d | 2015-11-25 | 2015-11-25 | 126 | 11d |  | ManhLN |  |
| 128 | 1.3.6 | **Testing** |  | 26d? | 2015-10-30 | 2015-12-04 |  | 0d |  |  | 336h |
| 129 | 1.3.6.1 | **Writing test case (continue)** |  | 10d? | 2015-10-30 | 2015-11-12 | 104 | 0d |  | MaiCTP | 160h |
| 130 | 1.3.6.1.1 | **System test case** |  | 5d? | 2015-10-30 | 2015-11-05 |  | 0d |  |  | 40h |
| 131 | 1.3.6.1.1.1 | Create system test case |  | 3d | 2015-10-30 | 2015-11-03 |  | 0d |  | TestTEAM | 24h |
| 132 | 1.3.6.1.1.2 | Review system test case |  | 1d? | 2015-11-04 | 2015-11-04 | 131 | 0d |  | MaiCTP | 8h |
| 133 | 1.3.6.1.1.3 | Update system test case |  | 1d? | 2015-11-05 | 2015-11-05 | 132 | 0d |  | TestTEAM | 8h |

| ID | WBS | Task | Type | Duration | Start | Finish | Predecessors | Total slack | Resources | Work |
| --- | --- | --- | --- | --- | --- | --- | --- | --- | --- | --- |
| 134 | 1.3.6.1.2 | **Integration test case** |  | 5d? | 2015-11-06 | 2015-11-12 | 130 | 0d |  | 40h |
| 135 | 1.3.6.1.2.1 | Create integration test case |  | 3d | 2015-11-06 | 2015-11-10 |  | 0d | TestTEAM | 24h |
| 136 | 1.3.6.1.2.2 | Review integration test case |  | 1d? | 2015-11-11 | 2015-11-11 | 135 | 0d | MaiCTP | 8h |
| 137 | 1.3.6.1.2.3 | Update integration test case |  | 1d? | 2015-11-12 | 2015-11-12 | 136 | 0d | TestTEAM | 8h |
| 138 | 1.3.6.1.3 | Writing test case complete | milestone | 0d | 2015-11-12 | 2015-11-12 | 134 | 0d |  |  |
| 139 | 1.3.6.2 | **Execute Test Round 1** |  | 8d | 2015-11-13 | 2015-11-24 | 129 | 0d |  | 80h |
| 140 | 1.3.6.2.1 | Execute Integration Test |  | 3d | 2015-11-13 | 2015-11-17 |  | 0d | TestTEAM | 24h |
| 141 | 1.3.6.2.2 | Fix bug Integration Test |  | 2d | 2015-11-18 | 2015-11-19 | 140 | 10d | DevTeam | 16h |
| 142 | 1.3.6.2.3 | Execute System Test |  | 3d | 2015-11-18 | 2015-11-20 | 140 | 0d | TestTEAM | 24h |
| 143 | 1.3.6.2.4 | Fix bug System Test |  | 2d | 2015-11-23 | 2015-11-24 | 142 | 7d | DevTeam | 16h |
| 144 | 1.3.6.3 | Update Test Case |  | 1d | 2015-11-23 | 2015-11-23 | 142 | 0d | TestTEAM | 8h |
| 145 | 1.3.6.4 | **Execute Test Round 2** |  | 8d | 2015-11-24 | 2015-12-03 | 144 | 0d |  | 80h |
| 146 | 1.3.6.4.1 | Execute Integration Test |  | 3d | 2015-11-24 | 2015-11-26 |  | 0d | TestTEAM | 24h |
| 147 | 1.3.6.4.2 | Fix bug Integration Test |  | 2d | 2015-11-27 | 2015-11-30 | 146 | 3d | DevTeam | 16h |
| 148 | 1.3.6.4.3 | Execute System Test |  | 3d | 2015-11-27 | 2015-12-01 | 146 | 0d | TestTEAM | 24h |
| 149 | 1.3.6.4.4 | Fix bug System Test |  | 2d | 2015-12-02 | 2015-12-03 | 148 | 0d | DevTeam | 16h |
| 150 | 1.3.6.5 | Create Test Report |  | 1d | 2015-12-04 | 2015-12-04 | 139, 145 | 0d | MaiCTP | 8h |
| 151 | 1.3.6.6 | Testing Complete | milestone | 0d | 2015-12-04 | 2015-12-04 | 150 | 0d |  |  |
| 152 | 1.3.7 | **Quality Control** |  | 3d | 2015-12-07 | 2015-12-09 | 128, 107 | 0d |  | 24h |
| 153 | 1.3.7.1 | Create Quality Report |  | 2d | 2015-12-07 | 2015-12-08 |  | 0d | MaiCTP | 16h |
| 154 | 1.3.7.2 | Review Quality Report |  | 0.5d | 2015-12-09 | 2015-12-09 | 153 | 0d | ManhLN | 4h |
| 155 | 1.3.7.3 | Update Quality Report |  | 0.5d | 2015-12-09 | 2015-12-09 | 154 | 0d | MaiCTP | 4h |
| 156 | 1.3.8 | Create Progress Report 5 |  | 1d? | 2015-12-10 | 2015-12-10 | 152 | 0d | MaiCTP | 8h |
| 157 | 1.3.9 | Submit Progress Report 5 | milestone | 0d | 2015-12-10 | 2015-12-10 | 156 | 0d | ManhLN |  |

| ID | WBS | Task | Type | Duration | Start | Finish | Predecessors | Total slack | Resources | Work |
| --- | --- | --- | --- | --- | --- | --- | --- | --- | --- | --- |
| 158 | 1.4 | **Termination** |  | 11d | 2015-12-11 | 2015-12-25 | 101 | 0d |  | 184h |
| 159 | 1.4.1 | Create lesson learned |  | 1d | 2015-12-11 | 2015-12-11 |  | 0d | TEAM | 8h |
| 160 | 1.4.2 | **Final Report Document** |  | 2d | 2015-12-14 | 2015-12-15 | 159 | 0d |  | 112h |
| 161 | 1.4.2.1 | Create Final Report document |  | 2d | 2015-12-14 | 2015-12-15 |  | 0d | ManhLN | 16h |
| 162 | 1.4.2.2 | Create Installing Guide |  | 2d | 2015-12-14 | 2015-12-15 |  | 0d | HuyNM; TrungVN | 32h |
| 163 | 1.4.2.3 | Create User Guideline |  | 2d | 2015-12-14 | 2015-12-15 |  | 0d | ChinhVC; AnhDD | 32h |
| 164 | 1.4.2.4 | Create Project Result Assessment |  | 2d | 2015-12-14 | 2015-12-15 |  | 0d | MaiCTP | 16h |
| 165 | 1.4.2.5 | Create Slides for Final Presentation |  | 2d | 2015-12-14 | 2015-12-15 |  | 0d | TEAM | 16h |
| 166 | 1.4.3 | Submit all Final Documents and Source codes | milestone | 0d | 2015-12-15 | 2015-12-15 | 160 | 8d | ManhLN |  |
| 167 | 1.4.4 | **Pre-closing** |  | 5d | 2015-12-16 | 2015-12-22 |  | 0d |  | 40h |
| 168 | 1.4.4.1 | Trainning presentation |  | 5d | 2015-12-16 | 2015-12-22 | 160 | 0d | TEAM | 40h |
| 169 | 1.4.5 | **Closing** |  | 3d | 2015-12-23 | 2015-12-25 | 168 | 0d |  | 24h |
| 170 | 1.4.5.1 | Presentation for Capstone Project |  | 3d | 2015-12-23 | 2015-12-25 |  | 0d | TEAM | 24h |
| 171 | 1.4.5.2 | Complete Project | milestone | 0d | 2015-12-25 | 2015-12-25 | 170 | 0d |  |  |
